# FlexiTime

Schedule from GanttProject, 2004-09-13 to 2005-04-26.
FlexiTime
Gestion des emplois du Temps / Projet de Génie Logiciel / Informatique Réseaux 3° année / Ingénieurs 2000 - Université de Marne-La-Vallée

## Calendars

- Project calendar: Mon-Fri working; Sat-Sun off.

## Resources

| Resource | Group |
| --- | --- |
| Jérôme GUERS |  |
| Fabien APPERT | Secrétaire + Responsable Client |
| Adrien BOUVET | Site Web + Responsable Qualité |
| Valère FOREL | Responsable Développement & test |
| Guillaume GUERRIN | Responsable technique |
| Prâsad RAMASSAMY | Responsable Interface Graphique |

## Schedule

| ID | WBS | Task | Type | Duration | Start | Finish | Predecessors | Complete | Resources |
| --- | --- | --- | --- | --- | --- | --- | --- | --- | --- |
| 1 | 1 | Définition du nom d'équipe | milestone | 0d | 2004-09-13 | 2004-09-13 |  | 100% |  |
| 2 | 2 | Attribution des rôles | milestone | 0d | 2004-09-14 | 2004-09-14 |  | 100% |  |
| 3 | 3 | **Gestion du planning** |  | 161d | 2004-09-14 | 2005-04-26 | 2 | 39% |  |
| 4 | 3.1 | Répartition des tâches CDC |  | 3d | 2004-09-14 | 2004-09-16 |  | 100% | Jérôme GUERS |
| 5 | 3.2 | Choix de l'outil de gestion de projet |  | 8d | 2004-09-17 | 2004-09-28 |  | 100% | Jérôme GUERS |
| 6 | 3.3 | Définition de l'état d'avancement |  | 4d | 2004-09-26 | 2004-09-30 |  | 100% | Jérôme GUERS [30%] |
| 7 | 3.4 | Répartition des tâches futures |  | 149d | 2004-09-26 | 2005-04-21 |  | 37% | Jérôme GUERS [10%] |
| 8 | 3.5 | Suivi de l'avancement |  | 149d | 2004-09-26 | 2005-04-21 |  | 37% | Jérôme GUERS [10%] |
| 9 | 3.6 | Mise en place du tableau d'avancement |  | 4d | 2004-11-19 | 2004-11-24 |  |  | Jérôme GUERS [80%] |
| 10 | 4 | **Cahier Des Charges** |  | 17d | 2004-09-17 | 2004-10-11 |  | 100% |  |
| 11 | 4.1 | Répartition des tâches | milestone | 0d | 2004-09-17 | 2004-09-17 | 4 | 100% |  |
| 12 | 4.2 | Présentation de l'équipe |  | 1d | 2004-09-17 | 2004-09-17 | 11 | 100% | Fabien APPERT |
| 13 | 4.3 | Définition de la charte graphique |  | 5d | 2004-09-17 | 2004-09-23 | 11 | 100% | Adrien BOUVET |
| 14 | 4.4 | **Consultation du client** |  | 2d | 2004-09-20 | 2004-09-21 |  | 100% |  |
| 15 | 4.4.1 | Réunion | milestone | 0d | 2004-09-20 | 2004-09-20 |  | 100% | Fabien APPERT |
| 16 | 4.4.2 | Bilan des contraintes émises par le client |  | 1d | 2004-09-21 | 2004-09-21 | 15 | 100% | Fabien APPERT |
| 17 | 4.5 | Glossaire des termes importants |  | 8d | 2004-09-22 | 2004-10-01 | 11, 14 | 100% | Guillaume GUERRIN |
| 18 | 4.6 | Liste des acteurs du système |  | 3d | 2004-09-22 | 2004-09-24 | 11, 14 | 100% | Valère FOREL [80%] |
| 19 | 4.7 | Diagramme d'interaction |  | 5d | 2004-09-25 | 2004-10-01 | 18 | 100% | Valère FOREL [80%] |
| 20 | 4.8 | Listes des fonctionnalités |  | 8d | 2004-09-22 | 2004-10-01 | 11, 14 | 100% | Prâsad RAMASSAMY |
| 21 | 4.9 | Réalisation du Logo |  | 6d | 2004-09-22 | 2004-09-29 |  | 100% | Fabien APPERT [50%]; Valère FOREL [20%] |
| 22 | 4.10 | Première visualisation des documents CDC | milestone | 0d | 2004-09-23 | 2004-09-23 |  | 100% |  |
| 23 | 4.11 | Relecture et mise en conformité avec la chartre |  | 2d | 2004-09-28 | 2004-09-29 |  | 100% | Adrien BOUVET |
| 24 | 4.12 | Rendu Pré-Cahier des Charges | milestone | 0d | 2004-09-30 | 2004-09-30 |  | 100% | Jérôme GUERS |
| 25 | 4.13 | Signature du Cahier des Charges | milestone | 0d | 2004-10-04 | 2004-10-04 |  | 100% | Adrien BOUVET; Fabien APPERT; Jérôme GUERS; Prâsad RAMASSAMY; Valère FOREL; Guillaume GUERRIN |

Notes:
- 1: Au cours de la première scéance de TD
- 2: Chef de projet : JG / Responsable client + secrétaire : FA / Responsable Qualité + site web : AB / Responsable développemnt + test : VF / Responsable technique : GG / Responsable interface graphique : PR
- 5: 5 solutions testées : / - Gantt Project / - MS Project / - dotProject / - phpCollab / - eGroupWare
- 11: Réunion d'une heure pour répartir les tâches afférentes au CDC
- 12: 1h30
- 13: Réalisation d'un .dot / 5 revues : / - 2h / - 1h / - 30min / - 30min / - 1h
- 15: Réunion du 20/09/2004 avec Chrystel ALLEBE
- 16: 2h
- 17: 3h
- 18: 1h
- 19: 1h30
- 20: 3h
- 21: FA : 1h / VF : 2h
- 22: 1h30 de réunion
- 23: 2h

| ID | WBS | Task | Type | Duration | Start | Finish | Predecessors | Complete | Resources |
| --- | --- | --- | --- | --- | --- | --- | --- | --- | --- |
| 26 | 5 | **Mise en place de la communication** |  | 45d | 2004-09-22 | 2004-11-23 |  | 100% |  |
| 27 | 5.1 | Ouverture du compte Hébergeur |  | 1d | 2004-09-22 | 2004-09-22 |  | 100% | Adrien BOUVET [10%] |
| 28 | 5.2 | Création de la mailing list |  | 1d | 2004-09-23 | 2004-09-23 | 27 | 100% | Adrien BOUVET [10%] |
| 29 | 5.3 | Création du forum |  | 4d | 2004-09-23 | 2004-09-28 | 27 | 100% | Adrien BOUVET [40%] |
| 30 | 5.4 | Création compte SVN |  | 1d | 2004-09-25 | 2004-09-27 |  | 100% | Jérôme GUERS [10%] |
| 31 | 5.5 | Description des outils de gestions |  | 15d | 2004-10-22 | 2004-11-11 |  | 100% | Adrien BOUVET [50%]; Jérôme GUERS [30%] |
| 32 | 6 | **Cahier des Charges Fonctionnelles** |  | 33d | 2004-10-05 | 2004-11-18 |  | 100% |  |
| 33 | 6.1 | Formation à la réalisation des UC |  | 1d | 2004-10-05 | 2004-10-05 |  | 100% | Jérôme GUERS [80%] |
| 34 | 6.2 | Répartition des UC à réaliser | milestone | 0d | 2004-10-06 | 2004-10-06 |  | 100% | Adrien BOUVET; Fabien APPERT; Jérôme GUERS [80%]; Prâsad RAMASSAMY; Valère FOREL; Guillaume GUERRIN |
| 35 | 6.3 | **Réalisation des diagrammes UC** |  | 11d | 2004-10-07 | 2004-10-21 | 34 | 100% |  |
| 36 | 6.3.1 | UC Visu infos des enseignants & stats |  | 11d | 2004-10-07 | 2004-10-21 |  | 100% | Fabien APPERT |
| 37 | 6.3.2 | UC Gestion du groupe |  | 11d | 2004-10-07 | 2004-10-21 |  | 100% | Adrien BOUVET |
| 38 | 6.3.3 | UC Gestion Salles&Matériels |  | 11d | 2004-10-07 | 2004-10-21 |  | 100% | Guillaume GUERRIN |
| 39 | 6.3.4 | UC Séances & Indispo Enseignants |  | 11d | 2004-10-07 | 2004-10-21 |  | 100% | Jérôme GUERS [80%] |
| 40 | 6.3.5 | UC Visu d'un EDT & Export |  | 11d | 2004-10-07 | 2004-10-21 |  | 100% | Valère FOREL |
| 41 | 6.3.6 | UC Gestion de l'appli |  | 11d | 2004-10-07 | 2004-10-21 |  | 100% | Prâsad RAMASSAMY |
| 42 | 6.4 | Mise au point avec consultant UML | milestone | 0d | 2004-10-18 | 2004-10-18 |  | 100% | Adrien BOUVET; Fabien APPERT; Jérôme GUERS [80%]; Prâsad RAMASSAMY; Valère FOREL; Guillaume GUERRIN |
| 43 | 6.5 | Structuration en paquetages |  | 9d | 2004-10-19 | 2004-10-29 | 42 | 100% | Fabien APPERT |
| 44 | 6.6 | Réalisation de la documentation des UC |  | 9d | 2004-10-19 | 2004-10-29 |  | 100% | Prâsad RAMASSAMY; Valère FOREL |
| 45 | 6.7 | Première relecture et mise en commun |  | 1d | 2004-10-28 | 2004-10-28 | 44 | 100% | Adrien BOUVET [50%]; Fabien APPERT; Jérôme GUERS [50%]; Prâsad RAMASSAMY; Valère FOREL; Guillaume GUERRIN [50%] |
| 46 | 6.8 | Réalisation des FQM par UC |  | 9d | 2004-10-29 | 2004-11-10 | 45 | 100% | Fabien APPERT [50%]; Prâsad RAMASSAMY; Valère FOREL |
| 47 | 6.9 | Diagramme des paquetages |  | 6d | 2004-10-29 | 2004-11-05 |  | 100% | Fabien APPERT [50%] |
| 48 | 7 | **Spécification de l'IG** |  | 10d | 2004-11-09 | 2004-11-22 |  | 100% |  |
| 49 | 7.1 | Zoning de l'interface |  | 3d | 2004-11-09 | 2004-11-11 |  | 100% | Fabien APPERT; Jérôme GUERS [80%]; Prâsad RAMASSAMY |
| 50 | 7.2 | Définition du mode Gestion |  | 7d | 2004-11-12 | 2004-11-22 | 49 | 100% | Prâsad RAMASSAMY |
| 51 | 7.3 | Description de la fenêtre principale |  | 4d | 2004-11-12 | 2004-11-17 | 49 | 100% | Jérôme GUERS [80%] |
| 52 | 7.4 | Définition des fenêtres de paramètres |  | 3d | 2004-11-16 | 2004-11-18 |  | 100% | Jérôme GUERS [80%] |
| 53 | 7.5 | Définition du mode Exploitation |  | 7d | 2004-11-12 | 2004-11-22 | 49 | 100% | Fabien APPERT |
| 54 | 7.6 | Définition de la Charte Graphique |  | 5d | 2004-11-10 | 2004-11-16 |  | 100% | Adrien BOUVET |
| 55 | 7.7 | Relecture & construction de la documentation finale |  | 4d | 2004-11-15 | 2004-11-18 |  | 100% | Adrien BOUVET |
| 56 | 7.8 | Définition du client léger |  | 4d | 2004-11-15 | 2004-11-18 |  | 100% | Guillaume GUERRIN [50%] |
| 57 | 7.9 | Définition des fenetres d'export |  | 4d | 2004-11-15 | 2004-11-18 |  | 100% | Valère FOREL |

Notes:
- 27: 10min
- 28: 20min
- 29: 2h
- 30: Recherche d'un hé
- 31: JG : 2h (SVN + outil collaboratif) / AB : 2h (forum, mail, site et relecture)
- 33: 2h de réunion entre chefs de projet pour échanger les connaissances de chaque groupe
- 34: Réunion d'avancement d'1h30 ayant abordée ce point
- 36: 6h
- 37: 2h
- 38: 1h30
- 39: 2h30
- 40: 3h
- 41: 2h30
- 42: 2 heures de TD Génie Logiciel
- 43: 6h
- 44: VF : 4h30 / PR : 3h
- 45: 4h de réunion pour mise en accord des définitions réalisées
- 46: VF : 4h / PR : 2h
- 47: 6h
- 49: FA : 2h / PR : 3h / FA - JG - PR : 1h30
- 50: PR : 8h
- 51: JG : 4h
- 52: JG : 3h
- 53: FA : 10h
- 54: AB : 1h30
- 55: AB : 6h
- 56: GG : 5h
- 57: VF : 4h

| ID | WBS | Task | Type | Duration | Start | Finish | Predecessors | Complete | Resources |
| --- | --- | --- | --- | --- | --- | --- | --- | --- | --- |
| 58 | 8 | **Cahier des charges techniques** |  | 73d | 2004-10-19 | 2005-01-27 |  | 30% |  |
| 59 | 8.1 | **Pré-Rapport technique** |  | 18d | 2004-10-19 | 2004-11-11 |  | 100% |  |
| 60 | 8.1.1 | Elaboration des besoin |  | 2d | 2004-10-19 | 2004-10-20 |  | 100% | Guillaume GUERRIN |
| 61 | 8.1.2 | Correction des besoins |  | 2d | 2004-10-21 | 2004-10-22 | 60 | 100% | Guillaume GUERRIN |
| 62 | 8.1.3 | Recherche des technologies |  | 8d | 2004-10-23 | 2004-11-03 | 61 | 100% | Guillaume GUERRIN [50%] |
| 63 | 8.1.4 | Redaction de la documentation |  | 6d | 2004-10-31 | 2004-11-08 | 62 | 100% |  |
| 64 | 8.2 | **Etude technique** |  | 27d | 2004-11-09 | 2004-12-15 |  | 18% |  |
| 65 | 8.2.1 | Apprentissage de LDAP |  | 6d | 2004-11-09 | 2004-11-16 |  | 100% | Valère FOREL |
| 66 | 8.2.2 | Manipulation des fichiers (XML, Exports, ...) |  | 16d | 2004-11-09 | 2004-11-30 |  | 59% | Guillaume GUERRIN [50%] |
| 67 | 8.2.3 | Test des différentes SGBDR |  | 6d | 2004-11-19 | 2004-11-26 |  |  | Valère FOREL |
| 68 | 8.2.4 | Choix de la bibliothèque d'IG |  | 8d | 2004-11-19 | 2004-11-30 |  |  | Prâsad RAMASSAMY |
| 69 | 8.2.5 | Définition de l'interface de défintion d'un EDT |  | 9d | 2004-11-27 | 2004-12-09 | 68 |  | Adrien BOUVET; Fabien APPERT |
| 70 | 8.2.6 | Test d'API d'Impression |  | 3d | 2004-11-19 | 2004-11-23 |  |  | Fabien APPERT |
| 71 | 8.2.7 | Test JUnit |  | 6d | 2004-11-19 | 2004-11-26 |  |  | Adrien BOUVET |
| 72 | 8.2.8 | Point bilan et d'avancement | milestone | 0d | 2004-11-26 | 2004-11-26 |  |  |  |
| 73 | 8.2.9 | Gestion du Drag&Drop |  | 5d | 2004-11-22 | 2004-11-26 |  |  | Fabien APPERT |
| 74 | 8.2.10 | Outils de compilation |  | 5d | 2004-11-24 | 2004-11-30 |  |  | Jérôme GUERS [80%] |
| 75 | 8.2.11 | Choix du serveur d'application |  | 4d | 2004-11-25 | 2004-11-30 |  |  | Valère FOREL |
| 76 | 8.2.12 | Test des bibliothèques d'envoi de mail |  | 4d | 2004-11-25 | 2004-11-30 |  |  | Guillaume GUERRIN |
| 77 | 8.2.13 | Tests des bibliothèques Java-LDAP |  | 7d | 2004-11-29 | 2004-12-07 |  |  | Valère FOREL |
| 78 | 8.2.14 | Test des bibliothèques Applications réparties |  | 7d | 2004-11-29 | 2004-12-07 |  |  | Guillaume GUERRIN |
| 79 | 8.2.15 | Test d'hibernate |  | 6d | 2004-11-30 | 2004-12-07 |  | 30% | Prâsad RAMASSAMY [50%] |
| 80 | 8.3 | Description de l'architecture logicielle |  | 37d | 2004-11-23 | 2005-01-12 |  |  |  |
| 81 | 9 | Développement |  | 30d | 2005-01-04 | 2005-02-14 |  |  |  |
| 82 | 10 | Correction et mise en forme |  | 13d | 2005-02-08 | 2005-02-24 |  |  |  |

Notes:
- 60: 1h30
- 61: 1h
- 62: 5h
- 63: 4h
- 65: VF : 1h
- 66: GG : 3h30
- 67: VF : / - Qualification des différentes SGBDR & choix justifié (Prévu 4h) :
- 68: Documentation sur Swing, SWT et JFace / Présentation à l'équipe et présentation de la préférence
- 69: Recherche des existants / Si pas d'existant, développement de notre API propre
- 71: Préparation d'une documentation d'utilisation de JUnit
- 73: Recherche sur la gestion Java du Drag&Drop / Préparation d'une API propre
- 74: Test - comparaison - choix de l'outil de compilation (Ant-Maven) / Préparation d'une doc d'utilisation
- 79: PR : / - Qualification d'Hibernate (Prévu 4h) : / 26/10/04 : 30 min
